How a schedule from MS Project changed from version to version. A marks actual dates.

## Version 1 (saved 2018-06-01, file Planificación-Seguimiento_MANEL_IZAN.mpp)

Note of the change: Semestre B

| ID | WBS | Task | Duration | Start | Finish | Predecessors | Complete | Total float |
| --- | --- | --- | --- | --- | --- | --- | --- | --- |
| 1 | 0 | **WBS Element** | 316.73d | 2019-01-02 A | 2020-03-25 |  | 41% | 0d |
| 2 | 1 | **Proyecto** | 316.73d | 2019-01-02 A | 2020-03-25 |  | 41% | 0d |
| 3 | 1.1 | **Fase de Análisis 15%** | 39.97d | 2019-01-02 A | 2019-02-26 A |  | 100% |  |
| 4 | 1.1.1 | **Elicitación 30%** | 9.8d | 2019-01-02 A | 2019-01-15 A |  | 100% |  |
| 5 |  | Inputs cliente/usuarios 10% | 5.25h | 2019-01-02 A | 2019-01-02 A |  | 100% |  |
| 6 |  | Observación sistema actual 20% | 10.5h | 2019-01-02 A | 2019-01-04 A | 5 | 100% |  |
| 7 |  | Resumen actas reuniones y dossier de observaciones | 0h | 2019-01-04 A | 2019-01-04 A | 6 | 100% |  |
| 8 |  | Negociación 30% | 15.75h | 2019-01-04 A | 2019-01-08 A | 6 | 100% |  |
| 9 |  | Documento de visión | 0h | 2019-01-08 A | 2019-01-08 A | 8 | 100% |  |
| 10 |  | Determinación de RF y RNF 30% | 31.5h | 2019-01-08 A | 2019-01-14 A | 8 | 100% |  |
| 11 |  | Documento de alcance | 0h | 2019-01-14 A | 2019-01-14 A | 10 | 100% |  |
| 12 |  | Priorización de objetivos 10% | 10.5h | 2019-01-14 A | 2019-01-15 A | 10 | 100% |  |
| 13 |  | Lista priorizada de R | 0h | 2019-01-15 A | 2019-01-15 A | 12 | 100% |  |
| 14 | 1.1.2 | **Análisis 40%** | 11.2d | 2019-01-15 A | 2019-01-30 A |  | 100% |  |
| 15 |  | Identificación RF y RNF 40% | 42h | 2019-01-15 A | 2019-01-23 A | 12 | 100% |  |
| 16 |  | Priorización RF 15% | 42h | 2019-01-23 A | 2019-01-30 A | 15 | 100% |  |
| 17 |  | Análisis arquitectura 15% | 15.75h | 2019-01-21 A | 2019-01-23 A | 15FF | 100% |  |
| 18 |  | Realización de diagramas 30% | 42h | 2019-01-23 A | 2019-01-30 A | 17 | 100% |  |
| 19 |  | Modelos y diagramas de análisis | 0h | 2019-01-30 A | 2019-01-30 A | 18 | 100% |  |
| 20 | 1.1.3 | **Validación 30%** | 18.97d | 2019-01-31 A | 2019-02-26 A |  | 100% |  |
| 21 |  | Definición de la validación RF 30% | 71.17h | 2019-01-31 A | 2019-02-13 A | 18 | 100% |  |
| 22 |  | Definición de la integración 10% | 7.88h | 2019-02-13 A | 2019-02-14 A | 21 | 100% |  |
| 23 |  | Definición de medidas de aseguramiento de la calidad 15% | 23.63h | 2019-01-31 A | 2019-02-05 A | 21SS | 100% |  |
| 24 |  | Definición de la validación de la arquitectura 15% | 31.51h | 2019-02-14 A | 2019-02-20 A | 22 | 100% |  |
| 25 |  | Integración de acciones específicas sobre el desarrollo y mitigación de riesgos en el Plan de calidad | 0h | 2019-02-05 A | 2019-02-05 A | 23 | 100% |  |
| 26 |  | Documento de validación | 0h | 2019-02-20 A | 2019-02-20 A | 24 | 100% |  |
| 27 |  | Definición de la migración 30% | 118.62h | 2019-02-05 A | 2019-02-26 A | 25 | 100% |  |
| 28 |  | Documento de migración | 0h | 2019-02-26 A | 2019-02-26 A | 27 | 100% |  |
| 29 | 1.2 | **Fase de Diseño 15%** | 64.75d | 2019-02-20 A | 2019-05-23 A |  | 100% |  |
| 30 |  | Selección de técnicas 5% | 13.12h | 2019-02-20 A | 2019-02-22 A | 24 | 100% |  |
| 31 |  | Documento de métodos/técnicas | 0h | 2019-02-22 A | 2019-02-22 A | 30 | 100% |  |
| 32 |  | Diseño de la interfaz de usuario 30% | 210h | 2019-02-22 A | 2019-04-04 A | 30 | 100% |  |
| 33 |  | Prototipos | 0h | 2019-04-04 A | 2019-04-04 A | 32 | 100% |  |
| 34 |  | Interfaz HTML | 0h | 2019-04-04 A | 2019-04-04 A | 33 | 100% |  |
| 35 |  | Reglas de diseño - Calidad | 0h | 2019-04-04 A | 2019-04-04 A | 25, 31, 33, 34 | 100% |  |
| 36 |  | Diseño de datos 25% | 131.25h | 2019-04-04 A | 2019-04-29 A | 33 | 100% |  |
| 37 |  | Diseño de la arquitectura 20% | 210h | 2019-04-04 A | 2019-05-14 A | 32 | 100% |  |
| 38 |  | Diagramas BD | 0h | 2019-04-29 A | 2019-04-29 A | 36 | 100% |  |
| 39 |  | Diagramas de arquitectura | 0h | 2019-05-14 A | 2019-05-14 A | 37 | 100% |  |
| 40 |  | Diseño de módulos 10% | 41.25h | 2019-05-14 A | 2019-05-21 A | 37 | 100% |  |
| 41 |  | Diseño de los circuitos de prueba 10% | 52.5h | 2019-05-14 A | 2019-05-23 A | 39 | 100% |  |
| 42 |  | Diagramas de interfaces | 0h | 2019-05-23 A | 2019-05-23 A | 40, 41 | 100% |  |
| 43 | 1.3 | **Fase de Implementación 35%** | 122.96d | 2019-05-21 A | 2019-11-12 |  | 37% | 94.78d |
| 44 | 1.3.1 | **Módulo 1 60%** | 93.1d | 2019-05-21 A | 2019-09-30 |  | 58% | 124.64d |
| 45 |  | Impl. Requisitos prioridad 1 40% | 147h | 2019-05-21 A | 2019-06-18 A | 40 | 100% |  |
| 46 |  | Modelo funcional 1 | 0h | 2019-06-18 A | 2019-06-18 A | 45 | 100% |  |
| 47 |  | Impl. Requisitos prioridad 2 30% | 147h | 2019-06-18 A | 2019-07-16 A | 45 | 100% |  |
| 48 |  | Modelo funcional 2 | 0h | 2019-07-16 A | 2019-07-16 A | 47 | 100% |  |
| 49 |  | Impl. Requisitos prioridad 3 20% | 220.5h | 2019-07-16 A | 2019-08-26 | 47 | 52% | 0d |
| 50 |  | Modelo funcional 3 | 0h | 2019-08-26 | 2019-08-26 | 49 |  | 177.72d |
| 51 |  | Impl. Requisitos prioridad 4 10% | 183.75h | 2019-08-26 | 2019-09-30 | 49 |  | 0d |
| 52 |  | Modelo funcional 4 | 0h | 2019-09-30 | 2019-09-30 | 51 |  | 153.22d |
| 53 | 1.3.2 | **Módulo 2 40%** | 121.46d | 2019-05-23 A | 2019-11-12 |  | 13% | 66.78d |
| 54 |  | Impl. Requisitos prioridad 1 20% | 73.5h | 2019-05-23 A | 2019-06-11 A | 38, 39, 42 | 100% |  |
| 55 |  | Modelo funcional 1 | 0h | 2019-06-11 A | 2019-06-11 A | 54 | 100% |  |
| 56 |  | Impl. Requisitos prioridad 2 30% | 220.5h | 2019-06-11 | 2019-09-16 | 55 |  | 66.78d |
| 57 |  | Modelo funcional 2 | 0h | 2019-09-16 | 2019-09-16 | 56 |  | 66.78d |
| 58 |  | Impl. Requisitos prioridad 3 50% | 294h | 2019-09-16 | 2019-11-12 | 57 |  | 66.78d |
| 59 |  | Modelo funcional 3 | 0h | 2019-11-12 | 2019-11-12 | 58 |  | 66.78d |
| 60 | 1.4 | **Fase de Test 20%** | 86.33d | 2019-09-30 | 2020-01-31 |  |  | 0d |
| 61 |  | Pruebas unitarias Módulo 1 40% | 367.5h | 2019-09-30 | 2019-12-10 | 51 |  | 0d |
| 62 |  | Checklist PU M1 | 280h | 2019-12-10 | 2020-01-31 | 61 |  | 66.89d |
| 63 |  | Pruebas unitarias Módulo 2 30% | 210h | 2019-11-12 | 2019-12-20 | 59 |  | 66.78d |
| 64 |  | Checklist PU M2 | 0h | 2019-12-20 | 2019-12-20 | 63 |  | 66.78d |
| 65 |  | Pruebas integración SW 10% | 210h | 2019-12-10 | 2020-01-20 | 61 |  | 0d |
| 66 |  | Checklist integración | 0h | 2020-01-20 | 2020-01-20 | 65 |  | 76.22d |
| 67 |  | Pruebas arquitectura 20% | 46.67h | 2020-01-20 | 2020-01-28 | 65 |  | 0d |
| 68 |  | Documentación pruebas arquitectura | 0h | 2020-01-28 | 2020-01-28 | 67 |  | 70d |
| 69 | 1.5 | **Fase de Implantación 5%** | 41.42d | 2020-01-28 | 2020-03-25 |  |  | 0d |
| 70 |  | Pruebas implantación 60% | 245h | 2020-01-28 | 2020-03-12 | 67 |  | 0d |

| ID | Task | Duration | Start | Finish | Predecessors | Total float |
| --- | --- | --- | --- | --- | --- | --- |
| 71 | Documentación pruebas implantación | 0h | 2020-03-12 | 2020-03-12 | 70 | 8.75d |
| 72 | Migración del sistema 15% | 43.75h | 2020-03-12 | 2020-03-20 | 70 | 0d |
| 73 | Dossier de migración | 0h | 2020-03-20 | 2020-03-20 | 72 | 2.92d |
| 74 | Pruebas de integridad de datos cliente 5% | 21.88h | 2020-03-20 | 2020-03-25 | 72 | 0d |
| 75 | Checklist PIDC | 0h | 2020-03-25 | 2020-03-25 | 74 | 0d |
| 76 | Formaciones 20% | 105h | 2020-01-30 | 2020-02-19 | 70SS+2d | 25.42d |

## Version 2 (saved 2018-06-01, file Planificación-Recursos_MANEL_IZAN.mpp)

Note of the change: Semestre B

Last finish 2020-03-25 → 2020-05-01 (+37d). Complete tasks 41 → 0.

Changed:

| ID | Task | Start | Finish | Duration | Complete | Total float | Other |
| --- | --- | --- | --- | --- | --- | --- | --- |
| 1 | **WBS Element** | 2019-01-02 A → 2019-01-02 | 2020-03-25 → 2020-05-01 (+37d) | 316.73d → 343.31d | 41% → 0% |  | baseline start 2019-01-02 → none; baseline finish 2020-05-01 → none |
| 2 | **Proyecto** | 2019-01-02 A → 2019-01-02 | 2020-03-25 → 2020-05-01 (+37d) | 316.73d → 343.31d | 41% → 0% |  | baseline start 2019-01-02 → none; baseline finish 2020-05-01 → none |
| 3 | **Fase de Análisis 15%** | 2019-01-02 A → 2019-01-02 | 2019-02-26 A → 2019-02-26 |  | 100% → 0% | none → 0d | baseline start 2019-01-02 → none; baseline finish 2019-02-26 → none |
| 4 | **Elicitación 30%** | 2019-01-02 A → 2019-01-02 | 2019-01-15 A → 2019-01-15 |  | 100% → 0% | none → 0d | baseline start 2019-01-02 → none; baseline finish 2019-01-15 → none |
| 5 | Inputs cliente/usuarios 10% | 2019-01-02 A → 2019-01-02 | 2019-01-02 A → 2019-01-02 |  | 100% → 0% | none → 0d | baseline start 2019-01-02 → none; baseline finish 2019-01-02 → none |
| 6 | Observación sistema actual 20% | 2019-01-02 A → 2019-01-02 | 2019-01-04 A → 2019-01-04 |  | 100% → 0% | none → 0d | baseline start 2019-01-02 → none; baseline finish 2019-01-04 → none |
| 7 | Resumen actas reuniones y dossier de observaciones | 2019-01-04 A → 2019-01-04 | 2019-01-04 A → 2019-01-04 |  | 100% → 0% | none → 341.21d | baseline start 2019-01-04 → none; baseline finish 2019-01-04 → none |
| 8 | Negociación 30% | 2019-01-04 A → 2019-01-04 | 2019-01-08 A → 2019-01-08 |  | 100% → 0% | none → 0d | baseline start 2019-01-04 → none; baseline finish 2019-01-08 → none |
| 9 | Documento de visión | 2019-01-08 A → 2019-01-08 | 2019-01-08 A → 2019-01-08 |  | 100% → 0% | none → 339.11d | baseline start 2019-01-08 → none; baseline finish 2019-01-08 → none |
| 10 | Determinación de RF y RNF 30% | 2019-01-08 A → 2019-01-08 | 2019-01-14 A → 2019-01-14 |  | 100% → 0% | none → 0d | baseline start 2019-01-08 → none; baseline finish 2019-01-14 → none |
| 11 | Documento de alcance | 2019-01-14 A → 2019-01-14 | 2019-01-14 A → 2019-01-14 |  | 100% → 0% | none → 334.91d | baseline start 2019-01-14 → none; baseline finish 2019-01-14 → none |
| 12 | Priorización de objetivos 10% | 2019-01-14 A → 2019-01-14 | 2019-01-15 A → 2019-01-15 |  | 100% → 0% | none → 0d | baseline start 2019-01-14 → none; baseline finish 2019-01-15 → none |
| 13 | Lista priorizada de R | 2019-01-15 A → 2019-01-15 | 2019-01-15 A → 2019-01-15 |  | 100% → 0% | none → 333.51d | baseline start 2019-01-15 → none; baseline finish 2019-01-15 → none |
| 14 | **Análisis 40%** | 2019-01-15 A → 2019-01-15 | 2019-01-30 A → 2019-01-30 |  | 100% → 0% | none → 0d | baseline start 2019-01-15 → none; baseline finish 2019-01-30 → none |
| 15 | Identificación RF y RNF 40% | 2019-01-15 A → 2019-01-15 | 2019-01-23 A → 2019-01-23 |  | 100% → 0% | none → 0d | baseline start 2019-01-15 → none; baseline finish 2019-01-23 → none |
| 16 | Priorización RF 15% | 2019-01-23 A → 2019-01-23 | 2019-01-30 A → 2019-01-30 |  | 100% → 0% | none → 322.31d | baseline start 2019-01-23 → none; baseline finish 2019-01-30 → none |
| 17 | Análisis arquitectura 15% | 2019-01-21 A → 2019-01-21 | 2019-01-23 A → 2019-01-23 |  | 100% → 0% | none → 0d | baseline start 2019-01-21 → none; baseline finish 2019-01-23 → none |
| 18 | Realización de diagramas 30% | 2019-01-23 A → 2019-01-23 | 2019-01-30 A → 2019-01-30 |  | 100% → 0% | none → 0d | baseline start 2019-01-23 → none; baseline finish 2019-01-30 → none |
| 19 | Modelos y diagramas de análisis | 2019-01-30 A → 2019-01-30 | 2019-01-30 A → 2019-01-30 |  | 100% → 0% | none → 322.31d | baseline start 2019-01-30 → none; baseline finish 2019-01-30 → none |
| 20 | **Validación 30%** | 2019-01-31 A → 2019-01-31 | 2019-02-26 A → 2019-02-26 |  | 100% → 0% | none → 0d | baseline start 2019-01-31 → none; baseline finish 2019-02-26 → none |
| 21 | Definición de la validación RF 30% | 2019-01-31 A → 2019-01-31 | 2019-02-13 A → 2019-02-13 |  | 100% → 0% | none → 0d | baseline start 2019-01-31 → none; baseline finish 2019-02-13 → none |
| 22 | Definición de la integración 10% | 2019-02-13 A → 2019-02-13 | 2019-02-14 A → 2019-02-14 |  | 100% → 0% | none → 0d | baseline start 2019-02-13 → none; baseline finish 2019-02-14 → none |
| 23 | Definición de medidas de aseguramiento de la calidad 15% | 2019-01-31 A → 2019-01-31 | 2019-02-05 A → 2019-02-05 |  | 100% → 0% | none → 303.35d | baseline start 2019-01-31 → none; baseline finish 2019-02-05 → none |
| 24 | Definición de la validación de la arquitectura 15% | 2019-02-14 A → 2019-02-14 | 2019-02-20 A → 2019-02-20 |  | 100% → 0% | none → 0d | baseline start 2019-02-14 → none; baseline finish 2019-02-20 → none |
| 25 | Integración de acciones específicas sobre el desarrollo y mitigación de riesgos en el Plan de calidad | 2019-02-05 A → 2019-02-05 | 2019-02-05 A → 2019-02-05 |  | 100% → 0% | none → 303.35d | baseline start 2019-02-05 → none; baseline finish 2019-02-05 → none |
| 26 | Documento de validación | 2019-02-20 A → 2019-02-20 | 2019-02-20 A → 2019-02-20 |  | 100% → 0% | none → 307.57d | baseline start 2019-02-20 → none; baseline finish 2019-02-20 → none |
| 27 | Definición de la migración 30% | 2019-02-05 A → 2019-02-05 | 2019-02-26 A → 2019-02-26 |  | 100% → 0% | none → 303.35d | baseline start 2019-02-05 → none; baseline finish 2019-02-26 → none |
| 28 | Documento de migración | 2019-02-26 A → 2019-02-26 | 2019-02-26 A → 2019-02-26 |  | 100% → 0% | none → 303.35d | baseline start 2019-02-26 → none; baseline finish 2019-02-26 → none |
| 29 | **Fase de Diseño 15%** | 2019-02-20 A → 2019-02-20 | 2019-05-23 A → 2019-05-23 |  | 100% → 0% | none → 0d | baseline start 2019-02-20 → none; baseline finish 2019-05-23 → none |
| 30 | Selección de técnicas 5% | 2019-02-20 A → 2019-02-20 | 2019-02-22 A → 2019-02-22 |  | 100% → 0% | none → 0d | baseline start 2019-02-20 → none; baseline finish 2019-02-22 → none |
| 31 | Documento de métodos/técnicas | 2019-02-22 A → 2019-02-22 | 2019-02-22 A → 2019-02-22 |  | 100% → 0% | none → 305.82d | baseline start 2019-02-22 → none; baseline finish 2019-02-22 → none |
| 32 | Diseño de la interfaz de usuario 30% | 2019-02-22 A → 2019-02-22 | 2019-04-04 A → 2019-04-04 |  | 100% → 0% | none → 0d | baseline start 2019-02-22 → none; baseline finish 2019-04-04 → none |
| 33 | Prototipos | 2019-04-04 A → 2019-04-04 | 2019-04-04 A → 2019-04-04 |  | 100% → 0% | none → 91.39d | baseline start 2019-04-04 → none; baseline finish 2019-04-04 → none |
| 34 | Interfaz HTML | 2019-04-04 A → 2019-04-04 | 2019-04-04 A → 2019-04-04 |  | 100% → 0% | none → 277.82d | baseline start 2019-04-04 → none; baseline finish 2019-04-04 → none |
| 35 | Reglas de diseño - Calidad | 2019-04-04 A → 2019-04-04 | 2019-04-04 A → 2019-04-04 |  | 100% → 0% | none → 277.82d | baseline start 2019-04-04 → none; baseline finish 2019-04-04 → none |
| 36 | Diseño de datos 25% | 2019-04-04 A → 2019-04-04 | 2019-04-29 A → 2019-04-29 |  | 100% → 0% | none → 91.39d | baseline start 2019-04-04 → none; baseline finish 2019-04-29 → none |
| 37 | Diseño de la arquitectura 20% | 2019-04-04 A → 2019-04-04 | 2019-05-14 A → 2019-05-14 |  | 100% → 0% | none → 0d | baseline start 2019-04-04 → none; baseline finish 2019-05-14 → none |
| 38 | Diagramas BD | 2019-04-29 A → 2019-04-29 | 2019-04-29 A → 2019-04-29 |  | 100% → 0% | none → 91.39d | baseline start 2019-04-29 → none; baseline finish 2019-04-29 → none |
| 39 | Diagramas de arquitectura | 2019-05-14 A → 2019-05-14 | 2019-05-14 A → 2019-05-14 |  | 100% → 0% | none → 73.89d | baseline start 2019-05-14 → none; baseline finish 2019-05-14 → none |
| 40 | Diseño de módulos 10% | 2019-05-14 A → 2019-05-14 | 2019-05-21 A → 2019-05-17 (-4d) | 41.25h → 26.25h | 100% → 0% | none → 0d | baseline start 2019-05-14 → none; baseline finish 2019-05-17 → none |
| 41 | Diseño de los circuitos de prueba 10% | 2019-05-14 A → 2019-05-14 | 2019-05-23 A → 2019-05-23 |  | 100% → 0% | none → 78.82d | baseline start 2019-05-14 → none; baseline finish 2019-05-23 → none |
| 42 | Diagramas de interfaces | 2019-05-23 A → 2019-05-23 | 2019-05-23 A → 2019-05-23 |  | 100% → 0% | none → 73.89d | baseline start 2019-05-23 → none; baseline finish 2019-05-23 → none |
| 43 | **Fase de Implementación 35%** | 2019-05-21 A → 2019-05-17 (-4d) | 2019-11-12 → 2019-12-10 (+28d) | 122.96d → 144.43d | 37% → 0% | 94.78d → 0d | baseline start 2019-05-17 → none; baseline finish 2019-12-10 → none |
| 44 | **Módulo 1 60%** | 2019-05-21 A → 2019-05-17 (-4d) | 2019-09-30 → 2019-09-26 (-4d) |  | 58% → 0% | 124.64d → 0d | baseline start 2019-05-17 → none; baseline finish 2019-09-26 → none |
| 45 | Impl. Requisitos prioridad 1 40% | 2019-05-21 A → 2019-05-17 (-4d) | 2019-06-18 A → 2019-06-14 (-4d) |  | 100% → 0% | none → 0d | baseline start 2019-05-17 → none; baseline finish 2019-06-14 → none |
| 46 | Modelo funcional 1 | 2019-06-18 A → 2019-06-14 (-4d) | 2019-06-18 A → 2019-06-14 (-4d) |  | 100% → 0% | none → 226.72d | baseline start 2019-06-14 → none; baseline finish 2019-06-14 → none |
| 47 | Impl. Requisitos prioridad 2 30% | 2019-06-18 A → 2019-06-14 (-4d) | 2019-07-16 A → 2019-07-12 (-4d) |  | 100% → 0% | none → 0d | baseline start 2019-06-14 → none; baseline finish 2019-07-12 → none |
| 48 | Modelo funcional 2 | 2019-07-16 A → 2019-07-12 (-4d) | 2019-07-16 A → 2019-07-12 (-4d) |  | 100% → 0% | none → 207.12d | baseline start 2019-07-12 → none; baseline finish 2019-07-12 → none |
| 49 | Impl. Requisitos prioridad 3 20% | 2019-07-16 A → 2019-07-12 (-4d) | 2019-08-26 → 2019-08-22 (-4d) |  | 52% → 0% |  | baseline start 2019-07-12 → none; baseline finish 2019-08-22 → none |
| 50 | Modelo funcional 3 | 2019-08-26 → 2019-08-22 (-4d) | 2019-08-26 → 2019-08-22 (-4d) |  |  |  | baseline start 2019-08-22 → none; baseline finish 2019-08-22 → none |
| 51 | Impl. Requisitos prioridad 4 10% | 2019-08-26 → 2019-08-22 (-4d) | 2019-09-30 → 2019-09-26 (-4d) |  |  |  | baseline start 2019-08-22 → none; baseline finish 2019-09-26 → none |
| 52 | Modelo funcional 4 | 2019-09-30 → 2019-09-26 (-4d) | 2019-09-30 → 2019-09-26 (-4d) |  |  |  | baseline start 2019-09-26 → none; baseline finish 2019-09-26 → none |
| 53 | **Módulo 2 40%** | 2019-05-23 A → 2019-05-23 | 2019-11-12 → 2019-12-10 (+28d) | 121.46d → 140.93d | 13% → 0% | 66.78d → 73.89d | baseline start 2019-05-23 → none; baseline finish 2019-12-10 → none |
| 54 | Impl. Requisitos prioridad 1 20% | 2019-05-23 A → 2019-05-23 | 2019-06-11 A → 2019-06-11 |  | 100% → 0% | none → 73.42d | baseline start 2019-05-23 → none; baseline finish 2019-06-11 → none |
| 55 | Modelo funcional 1 | 2019-06-11 A → 2019-06-11 | 2019-06-11 A → 2019-06-11 |  | 100% → 0% | none → 73.42d | baseline start 2019-06-11 → none; baseline finish 2019-06-11 → none |
| 56 | Impl. Requisitos prioridad 2 30% |  | 2019-09-16 → 2019-08-27 (-20d) |  |  | 66.78d → 73.42d | resources Team leader → DESARROLLADOR1; baseline start 2019-06-11 → none; baseline finish 2019-08-27 → none |
| 57 | Modelo funcional 2 | 2019-09-16 → 2019-08-27 (-20d) | 2019-09-16 → 2019-08-27 (-20d) |  |  | 66.78d → 73.89d | baseline start 2019-08-27 → none; baseline finish 2019-08-27 → none |
| 58 | Impl. Requisitos prioridad 3 50% | 2019-09-16 → 2019-08-27 (-20d) | 2019-11-12 → 2019-12-10 (+28d) |  |  | 66.78d → 73.89d | resources Team leader → DESARROLLADOR1; baseline start 2019-08-27 → none; baseline finish 2019-12-10 → none |
| 59 | Modelo funcional 3 | 2019-11-12 → 2019-12-10 (+28d) | 2019-11-12 → 2019-12-10 (+28d) |  |  | 66.78d → 73.89d | baseline start 2019-12-10 → none; baseline finish 2019-12-10 → none |
| 60 | **Fase de Test 20%** | 2019-09-30 → 2019-09-26 (-4d) | 2020-01-31 → 2020-01-29 (-2d) |  |  |  | baseline start 2019-09-26 → none; baseline finish 2020-01-29 → none |
| 61 | Pruebas unitarias Módulo 1 40% | 2019-09-30 → 2019-09-26 (-4d) | 2019-12-10 → 2019-12-06 (-4d) |  |  |  | baseline start 2019-09-26 → none; baseline finish 2019-12-06 → none |
| 62 | Checklist PU M1 | 2019-12-10 → 2019-12-06 (-4d) | 2020-01-31 → 2020-01-29 (-2d) |  |  |  | baseline start 2019-12-06 → none; baseline finish 2020-01-29 → none |
| 63 | Pruebas unitarias Módulo 2 30% | 2019-11-12 → 2019-12-10 (+28d) | 2019-12-20 → 2020-01-20 (+31d) |  |  | 66.78d → 73.89d | baseline start 2019-12-10 → none; baseline finish 2020-01-20 → none |
| 64 | Checklist PU M2 | 2019-12-20 → 2020-01-20 (+31d) | 2019-12-20 → 2020-01-20 (+31d) |  |  | 66.78d → 73.89d | baseline start 2020-01-20 → none; baseline finish 2020-01-20 → none |
| 65 | Pruebas integración SW 10% | 2019-12-10 → 2019-12-06 (-4d) | 2020-01-20 → 2020-01-16 (-4d) |  |  |  | baseline start 2019-12-06 → none; baseline finish 2020-01-16 → none |
| 66 | Checklist integración | 2020-01-20 → 2020-01-16 (-4d) | 2020-01-20 → 2020-01-16 (-4d) |  |  |  | baseline start 2020-01-16 → none; baseline finish 2020-01-16 → none |
| 67 | Pruebas arquitectura 20% | 2020-01-20 → 2020-01-16 (-4d) | 2020-01-28 → 2020-01-24 (-4d) |  |  |  | baseline start 2020-01-16 → none; baseline finish 2020-01-24 → none |
| 68 | Documentación pruebas arquitectura | 2020-01-28 → 2020-01-24 (-4d) | 2020-01-28 → 2020-01-24 (-4d) |  |  |  | baseline start 2020-01-24 → none; baseline finish 2020-01-24 → none |
| 69 | **Fase de Implantación 5%** | 2020-01-28 → 2020-01-24 (-4d) | 2020-03-25 → 2020-05-01 (+37d) | 41.42d → 70d |  |  | baseline start 2020-01-24 → none; baseline finish 2020-05-01 → none |
| 70 | Pruebas implantación 60% | 2020-01-28 → 2020-01-24 (-4d) | 2020-03-12 → 2020-04-08 (+27d) | 245h → 276.35h |  |  | resources DESARROLLADOR2&3 [200%] → DESARROLLADOR2&3 [200%]; DESARROLLADOR1; baseline start 2020-01-24 → none; baseline finish 2020-04-08 → none |

| ID | Task | Start | Finish | Duration | Total float | Other |
| --- | --- | --- | --- | --- | --- | --- |
| 71 | Documentación pruebas implantación | 2020-03-12 → 2020-04-08 (+27d) | 2020-03-12 → 2020-04-08 (+27d) |  | 8.75d → 17.27d | baseline start 2020-04-08 → none; baseline finish 2020-04-08 → none |
| 72 | Migración del sistema 15% | 2020-03-12 → 2020-04-08 (+27d) | 2020-03-20 → 2020-04-27 (+38d) | 43.75h → 59.5h |  | resources DESARROLLADOR2&3 [200%] → DESARROLLADOR2&3 [200%]; DESARROLLADOR1; baseline start 2020-04-08 → none; baseline finish 2020-04-27 → none |
| 73 | Dossier de migración | 2020-03-20 → 2020-04-27 (+38d) | 2020-03-20 → 2020-04-27 (+38d) |  | 2.92d → 4.2d | baseline start 2020-04-27 → none; baseline finish 2020-04-27 → none |
| 74 | Pruebas de integridad de datos cliente 5% | 2020-03-20 → 2020-04-27 (+38d) | 2020-03-25 → 2020-05-01 (+37d) | 21.88h → 23.47h |  | resources DESARROLLADOR2&3 [200%] → DESARROLLADOR2&3 [200%]; DESARROLLADOR1; baseline start 2020-04-27 → none; baseline finish 2020-05-01 → none |
| 75 | Checklist PIDC | 2020-03-25 → 2020-05-01 (+37d) | 2020-03-25 → 2020-05-01 (+37d) |  |  | baseline start 2020-05-01 → none; baseline finish 2020-05-01 → none |
| 76 | Formaciones 20% | 2020-01-30 → 2020-01-28 (-2d) | 2020-02-19 → 2020-02-17 (-2d) |  | 25.42d → 54d | baseline start 2020-01-28 → none; baseline finish 2020-02-17 → none |
